# DISEMCO NUEVO 01

Schedule from MS Project XML, 2015-04-14 to 2016-02-14, 10 hours a day, costs in $.

## Calendars

- Estándar: Mon-Thu 07:00-12:00, 13:00-18:00; Fri 07:00-12:00, 13:00-16:00; Sat-Sun off. Exceptions (off unless hours are given): 2015-05-18 (cat1), 2015-06-08 (cat2), 2015-06-15 (cat3), 2015-06-29 (cat3), 2015-07-20 (independencia), 2015-08-07 (cat4), 2015-08-17 (cat5), 2015-10-12 (raza), 2015-11-02 (santos), 2015-11-16 (cartagena), 2015-12-25 (navidad), 2016-01-01 (añoo nuevo), 2016-01-11 (reyes), 2016-02-14 07:00-12:00 (trabajo).

## Schedule

| ID | WBS | Task | Type | Duration | Start | Finish | Predecessors | Total slack | Free slack | Cost | item | unidad | cantidad |
| --- | --- | --- | --- | --- | --- | --- | --- | --- | --- | --- | --- | --- | --- |
| 1 | 1 | **Construción alumbrado perimetral de la Estación Araguaney, Que hacen parte de los trabajos de recuperación CENIT, para el OLEODUCTO BICENTENARIO DE COLOMBIA S.A.S.** |  | 198d | 2015-04-14 | 2016-02-14 |  | 0d |  | 458,450,877 |  |  |  |
| 2 | 1.1 | firma acta inicio | milestone | 0d | 2015-04-14 | 2015-04-14 |  | 198d |  |  |  |  |  |
| 3 | 1.2 | **Movilización y Desmovilización** |  | 15d | 2015-04-14 | 2015-05-05 |  | 0d |  | 15,430,787 | 1 |  |  |
| 4 | 1.2.1 | Movilización y Desmovilización |  | 15d | 2015-04-14 | 2015-05-05 |  | 0d |  | 15,430,787 | 1.1 | Gl | 1 |
| 5 | 1.3 | **ALUMBRADO PERIMETRAL DE LA PLANTA** |  | 143d | 2015-04-24 | 2015-12-03 |  | 0d |  | 385,993,685 | 2 |  |  |
| 6 | 1.3.1 | Localización y replanteo |  | 39d | 2015-04-24 | 2015-06-25 | 4SS+8d | 0d |  |  |  | Gl | 1 |
| 7 | 1.3.2 | Excavación manual para banco de ductos |  | 140d | 2015-04-29 | 2015-12-03 | 6SS+3d | 0d |  | 24,786,579 | 2.11 | m3 | 207 |
| 8 | 1.3.3 | Apertura de hueco para poste según planos |  | 136d | 2015-05-04 | 2015-12-02 | 7SS+3d | 48d | 0d | 4,070,180 | 2.1 | Un | 20 |
| 9 | 1.3.4 | **Suministro y tendida en banco de ductos de tubería PVC de 2 " . Incluye soportes en varilla de hierro de 1/2 " .** |  | 134d | 2015-05-06 | 2015-12-02 |  | 48d |  | 52,249,536 | 2.1 | m | 1728 |
| 10 | 1.3.4.1 | Orden de compra |  | 30d | 2015-05-06 | 2015-06-24 | 8SS+2d | 48d | 0d | 10,449,907 |  |  |  |
| 11 | 1.3.4.2 | Materiales en obra |  | 60d | 2015-07-08 | 2015-10-07 | 10SS+39d | 48d | 0d | 20,899,814 |  |  |  |
| 12 | 1.3.4.3 | instalacion |  | 30d | 2015-09-15 | 2015-10-29 | 11SS+44d | 48d | 0d | 15,674,861 |  |  |  |
| 13 | 1.3.4.4 | Prueba comissioning y Precomissioning |  | 16d | 2015-11-09 | 2015-12-02 | 12SS+35d | 48d |  | 5,224,954 |  |  |  |
| 14 | 1.3.5 | Concreto de protección para el ducto 1:2:4 o 2500 PSI |  | 130d | 2015-05-13 | 2015-12-02 | 10SS+4d | 48d |  | 36,953,000 | 2.13 | m3 | 35 |
| 15 | 1.3.6 | Concreto Rojo de Señalización 1:3:6 o 1500 PSI |  | 125d | 2015-05-05 | 2015-11-18 | 8SS+1d | 58d | 0d | 7,030,100 | 2.14 | m3 | 7 |
| 16 | 1.3.7 | Cimentación en concreto de 4000 PSI y pernos de anclaje para poste de 12 metros |  | 118d | 2015-05-13 | 2015-11-12 | 15SS+5d | 60d |  | 17,068,824 | 2.3 | m3 | 14.4 |
| 17 | 1.3.8 | **Suministro y tendido de cable de cobre desnudo, temple suave, calibre No. 1/0 AWG** |  | 78d | 2015-05-06 | 2015-09-08 |  | 0d |  | 29,135,616 | 2.9 | m | 944 |
| 18 | 1.3.8.1 | Orden de compra |  | 10d | 2015-05-06 | 2015-05-22 | 7SS+5d | 0d |  | 5,827,123 |  |  |  |
| 19 | 1.3.8.2 | Materiales en obra |  | 10d | 2015-06-24 | 2015-07-09 | 18SS+30d | 62d | 0d | 11,654,246 |  |  |  |
| 20 | 1.3.8.3 | instalacion |  | 5d | 2015-08-03 | 2015-08-11 | 19SS+25d | 104d | 0d | 8,740,685 |  |  |  |
| 21 | 1.3.8.4 | prubas de prueba comissioning y Precomissioning |  | 8d | 2015-08-26 | 2015-09-08 | 20SS+15d | 104d |  | 2,913,562 |  |  |  |
| 22 | 1.3.9 | **Suministro de materiales y construcción de afloramiento Banco de Ductos de 2 " , según Típico.** |  | 105d | 2015-05-06 | 2015-10-19 |  | 0d |  | 6,971,060 | 2.6 | un | 20 |
| 23 | 1.3.9.1 | Orden de compra |  | 30d | 2015-05-06 | 2015-06-24 | 18SS | 0d |  | 1,394,212 |  |  |  |
| 24 | 1.3.9.2 | Materiales en obra |  | 30d | 2015-06-24 | 2015-08-11 | 23SS+30d | 77d | 0d | 2,788,424 |  |  |  |
| 25 | 1.3.9.3 | instalacion |  | 30d | 2015-08-11 | 2015-09-24 | 24SS+30d | 77d | 0d | 2,091,318 |  |  |  |
| 26 | 1.3.9.4 | prubas de prueba comissioning y Precomissioning |  | 30d | 2015-09-03 | 2015-10-19 | 25SS+15d | 77d |  | 697,106 |  |  |  |

| ID | WBS | Task | Type | Duration | Start | Finish | Predecessors | Total slack | Free slack | Cost | item | unidad | cantidad |
| --- | --- | --- | --- | --- | --- | --- | --- | --- | --- | --- | --- | --- | --- |
| 27 | 1.3.10 | **Suministro e instalación de caja de conexión pie de poste. Incluye cableado, marquillas, correas, base en concreto, soporte en Chanel unistrut, niples en conduit g alvanizado IMC y accesorios para entrada y salida de acometidas, equipada con todos los el** |  | 120d | 2015-05-06 | 2015-11-10 |  | 62d |  | 53,399,260 | 2.5 | un | 20 |
| 28 | 1.3.10.1 | Orden de compra |  | 60d | 2015-05-06 | 2015-08-11 | 10SS | 72d | 0d | 10,679,852 |  |  |  |
| 29 | 1.3.10.2 | Materiales en obra |  | 90d | 2015-06-05 | 2015-10-26 | 28SS+20d | 72d |  | 21,359,704 |  |  |  |
| 30 | 1.3.10.3 | instalacion |  | 60d | 2015-07-16 | 2015-10-19 | 19SS+15d | 62d | 0d | 16,019,778 |  |  |  |
| 31 | 1.3.10.4 | prubas de prueba comissioning y Precomissioning |  | 60d | 2015-08-11 | 2015-11-10 | 30SS+15d | 62d |  | 5,339,926 |  |  |  |
| 32 | 1.3.11 | **Suministro de materiales e instalación de puesta a tierra para para el poste metálico y la caja de conexión, incluye Varilla Copperweld de 5/8 x 2,40 m, cable verde 2 AWG, terminales de compresión y soldaduras exotérmicas** |  | 130d | 2015-05-14 | 2015-12-03 |  | 0d |  | 6,209,460 | 2.7 | un | 20 |
| 33 | 1.3.11.1 | Orden de compra |  | 60d | 2015-05-14 | 2015-08-19 | 23SS+5d | 0d |  | 1,241,892 |  |  |  |
| 34 | 1.3.11.2 | Materiales en obra |  | 90d | 2015-06-05 | 2015-10-26 | 33SS+15d | 47d | 0d | 2,483,784 |  |  |  |
| 35 | 1.3.11.3 | instalacion |  | 60d | 2015-08-19 | 2015-11-19 | 34FF+15d | 47d | 0d | 1,862,838 |  |  |  |
| 36 | 1.3.11.4 | prubas de prueba comissioning y Precomissioning |  | 60d | 2015-09-03 | 2015-12-03 | 35SS+10d | 47d |  | 620,946 |  |  |  |
| 37 | 1.3.12 | **Suministro, armada, hincada y plomada de poste metálico de 12 m x 510 kg, galvanizado en caliente, construido en tres (3) secciones tronco cónicas poliédricas embonables.** |  | 130d | 2015-05-14 | 2015-12-03 |  | 47d |  | 52,733,180 | 2.2 | un | 20 |
| 38 | 1.3.12.1 | Orden de compra |  | 30d | 2015-05-14 | 2015-07-02 | 33SS | 47d | 0d | 10,546,636 |  |  |  |
| 39 | 1.3.12.2 | Materiales en obra |  | 60d | 2015-07-02 | 2015-10-01 | 38SS+30d | 47d | 0d | 21,093,272 |  |  |  |
| 40 | 1.3.12.3 | instalacion |  | 60d | 2015-08-11 | 2015-11-10 | 39FF+25d | 47d | 0d | 15,819,954 |  |  |  |
| 41 | 1.3.12.4 | prubas de prueba comissioning y Precomissioning |  | 30d | 2015-10-19 | 2015-12-03 | 40FF+15d | 47d |  | 5,273,318 |  |  |  |
| 42 | 1.3.13 | **Suministro e instalación de Reflector de sodio de tipo RRA 250 W, con balsto multitap (208, 240, 277 V), para alumbrado publico, incluye cableado desde caja pié de poste, conexionado, marquillado, anclaje en poste y puesta en funcionamiento, pruebas, prec** |  | 125d | 2015-05-14 | 2015-11-26 |  | 50d |  | 20,366,340 | 2.4 | un | 20 |
| 43 | 1.3.13.1 | Orden de compra |  | 30d | 2015-05-14 | 2015-07-02 | 38SS | 50d | 0d | 4,073,268 |  |  |  |
| 44 | 1.3.13.2 | Materiales en obra |  | 40d | 2015-07-02 | 2015-09-02 | 43SS+30d | 52d | 0d | 8,146,536 |  |  |  |
| 45 | 1.3.13.3 | instalacion |  | 30d | 2015-09-17 | 2015-11-03 | 44FF+40d | 52d | 0d | 6,109,902 |  |  |  |
| 46 | 1.3.13.4 | prubas de prueba comissioning y Precomissioning |  | 15d | 2015-11-03 | 2015-11-26 | 45SS+30d | 52d |  | 2,036,634 |  |  |  |
| 47 | 1.3.14 | **Suministro y tendido de cableado de Acometida eléctrica en cable de cobre THHW No.4 AWG, pruebas, preco y commisioning.** |  | 115d | 2015-05-14 | 2015-11-10 |  | 50d |  | 65,142,000 | 2.8 | m | 3300 |
| 48 | 1.3.14.1 | Orden de compra |  | 30d | 2015-05-14 | 2015-07-02 | 43SS | 50d | 0d | 13,028,400 |  |  |  |
| 49 | 1.3.14.2 | Materiales en obra |  | 30d | 2015-07-02 | 2015-08-19 | 48SS+30d | 62d | 0d | 26,056,800 |  |  |  |
| 50 | 1.3.14.3 | instalacion |  | 30d | 2015-09-03 | 2015-10-19 | 49SS+40d | 62d | 0d | 19,542,600 |  |  |  |
| 51 | 1.3.14.4 | prubas de prueba comissioning y Precomissioning |  | 25d | 2015-10-01 | 2015-11-10 | 50SS+20d | 62d | 0d | 6,514,200 |  |  |  |
| 52 | 1.3.15 | Relleno en material seleccionado de la excavación compactado |  | 112d | 2015-06-05 | 2015-11-30 | 48SS+15d | 50d |  | 9,878,550 | 2.12 | m3 | 165 |
| 53 | 1.3.16 | TERMINACION ALUMBRADO PERIMETRAL PLANTA | milestone | 0d | 2015-11-10 | 2015-11-10 | 51FF | 62d |  |  |  |  |  |

| ID | WBS | Task | Type | Duration | Start | Finish | Predecessors | Total slack | Free slack | Cost | item | unidad | cantidad |
| --- | --- | --- | --- | --- | --- | --- | --- | --- | --- | --- | --- | --- | --- |
| 54 | 1.4 | **ALUMBRADO CASETA EQUIPOS CONTRAINCENDIOS** |  | 120d | 2015-05-14 | 2015-11-19 |  | 0d |  | 6,533,541 | 3 |  |  |
| 55 | 1.4.1 | **Suministro e instalacion de tuberia conduit galvanizada IMC de 1 " incluye accesorios para conduit, herrajes y soportes para la tubería.** |  | 120d | 2015-05-14 | 2015-11-19 |  | 0d |  | 1,188,045 | 3.2 | m | 15 |
| 56 | 1.4.1.1 | Orden de compra |  | 30d | 2015-05-14 | 2015-07-02 | 33SS | 0d |  | 237,608 |  |  |  |
| 57 | 1.4.1.2 | Materiales en obra |  | 30d | 2015-07-02 | 2015-08-19 | 56SS+30d | 57d | 0d | 475,218 |  |  |  |
| 58 | 1.4.1.3 | instalacion |  | 30d | 2015-08-19 | 2015-10-01 | 57SS+30d | 57d | 0d | 356,414 |  |  |  |
| 59 | 1.4.1.4 | prubas de prueba comissioning y Precomissioning |  | 30d | 2015-10-01 | 2015-11-19 | 58SS+30d | 57d |  | 118,805 |  |  |  |
| 60 | 1.4.2 | **Suministro e instalacion de luminaria vertical, cuerpo en aluminio inyectado, cerrada con vidrio templado de seguridad, de reparto simétrico para aplicaciones en interiores. REF.: INDULUX BC –CI de 150 W Sodio, con balasto CWA120/208/240/277 V de ROY ALPH** |  | 118d | 2015-05-14 | 2015-11-17 |  | 0d |  | 5,345,496 | 3.1 | un | 6 |
| 61 | 1.4.2.1 | Orden de compra |  | 30d | 2015-05-14 | 2015-07-02 | 56SS | 0d |  | 1,069,099 |  |  |  |
| 62 | 1.4.2.2 | Materiales en obra |  | 30d | 2015-05-29 | 2015-07-16 | 61SS+10d | 59d | 0d | 2,138,198 |  |  |  |
| 63 | 1.4.2.3 | instalacion |  | 30d | 2015-06-05 | 2015-07-27 | 62SS+5d | 59d | 0d | 1,603,649 |  |  |  |
| 64 | 1.4.2.4 | prubas de prueba comissioning y Precomissioning |  | 98d | 2015-06-17 | 2015-11-17 | 63SS+5d | 59d | 0d | 534,550 |  |  |  |
| 65 | 1.4.2.5 | TERMINACION CASETA EQUIPOS SCI | milestone | 0d | 2015-11-17 | 2015-11-17 | 64 | 59d |  |  |  |  |  |
| 66 | 1.5 | **TRAMPA DE DESPACHO** |  | 143d | 2015-05-14 | 2015-12-23 |  | 0d |  | 33,566,748 | 4 |  |  |
| 67 | 1.5.1 | Excavación manual Banco de ductos |  | 48d | 2015-05-19 | 2015-08-03 | 61SS+2d | 69d | 0d | 1,915,872 | 4.2 | m3 | 16 |
| 68 | 1.5.2 | Concreto de protección del ducto 1:2:4 o 2500 PSI |  | 103d | 2015-05-22 | 2015-10-29 | 67SS+3d | 69d |  | 3,167,400 | 4.4 | m3 | 3 |
| 69 | 1.5.3 | **Suministro y tendida de tubería PVC de 1 1/2 " en banco de ductos con 4 tubos.** |  | 103d | 2015-05-14 | 2015-10-22 |  | 0d |  | 5,061,000 | 4.1 | m | 200 |
| 70 | 1.5.3.1 | Orden de compra |  | 30d | 2015-05-14 | 2015-07-02 | 61SS | 0d |  | 1,012,200 |  |  |  |
| 71 | 1.5.3.2 | Materiales en obra |  | 30d | 2015-07-02 | 2015-08-19 | 70SS+30d | 74d | 0d | 2,024,400 |  |  |  |
| 72 | 1.5.3.3 | instalacion |  | 30d | 2015-08-19 | 2015-10-01 | 71SS+30d | 74d | 0d | 1,518,300 |  |  |  |
| 73 | 1.5.3.4 | prubas de prueba comissioning y Precomissioning |  | 13d | 2015-10-01 | 2015-10-22 | 72SS+30d | 74d |  | 506,100 |  |  |  |
| 74 | 1.5.4 | **Suministro, armada, hincada y plomada de poste metálico de 12 m x 510 kg, galvanizado en caliente, construido en tres (3) secciones tronco cónicas poliédricas embonables.** |  | 120d | 2015-05-14 | 2015-11-19 |  | 0d |  | 5,273,318 | 4.8 | m | 2 |
| 75 | 1.5.4.1 | Orden de compra |  | 30d | 2015-05-14 | 2015-07-02 | 70SS | 0d |  | 1,054,664 |  |  |  |
| 76 | 1.5.4.2 | Materiales en obra |  | 30d | 2015-07-02 | 2015-08-19 | 75SS+30d | 57d | 0d | 2,109,327 |  |  |  |
| 77 | 1.5.4.3 | instalacion |  | 30d | 2015-08-26 | 2015-10-08 | 76SS+35d | 57d | 0d | 1,581,995 |  |  |  |
| 78 | 1.5.4.4 | prubas de prueba comissioning y Precomissioning |  | 30d | 2015-10-01 | 2015-11-19 | 77SS+25d | 57d |  | 527,332 |  |  |  |

| ID | WBS | Task | Type | Duration | Start | Finish | Predecessors | Total slack | Free slack | Cost | item | unidad | cantidad |
| --- | --- | --- | --- | --- | --- | --- | --- | --- | --- | --- | --- | --- | --- |
| 79 | 1.5.5 | **Suministro de materiales y construcción de afloramiento Banco de Ductos de 1 1/2 " , según Típico.** |  | 125d | 2015-05-14 | 2015-11-26 |  | 0d |  | 410,016 | 4.12 | un | 2 |
| 80 | 1.5.5.1 | Orden de compra |  | 30d | 2015-05-14 | 2015-07-02 | 75SS | 0d |  | 82,003 |  |  |  |
| 81 | 1.5.5.2 | Materiales en obra |  | 30d | 2015-07-02 | 2015-08-19 | 80SS+30d | 52d | 0d | 164,006 |  |  |  |
| 82 | 1.5.5.3 | instalacion |  | 30d | 2015-08-26 | 2015-10-08 | 81SS+35d | 52d | 0d | 123,005 |  |  |  |
| 83 | 1.5.5.4 | prubas de prueba comissioning y Precomissioning |  | 30d | 2015-10-09 | 2015-11-26 | 82SS+30d | 52d |  | 41,002 |  |  |  |
| 84 | 1.5.6 | **Suministro e instalacion de tubo galvanizado de 1 " . Incluye accesorios para conduit CL. 1 DIV. 2 y soportes en chanel unistrut.** |  | 120d | 2015-05-14 | 2015-11-19 |  | 0d |  | 4,257,180 | 4.11 | m | 60 |
| 85 | 1.5.6.1 | Orden de compra |  | 30d | 2015-05-14 | 2015-07-02 | 80SS | 0d |  | 851,436 |  |  |  |
| 86 | 1.5.6.2 | Materiales en obra |  | 30d | 2015-07-02 | 2015-08-19 | 85SS+30d | 57d | 0d | 1,702,872 |  |  |  |
| 87 | 1.5.6.3 | instalacion |  | 30d | 2015-08-19 | 2015-10-01 | 86SS+30d | 57d | 0d | 1,277,154 |  |  |  |
| 88 | 1.5.6.4 | prubas de prueba comissioning y Precomissioning |  | 30d | 2015-10-01 | 2015-11-19 | 87SS+30d | 57d |  | 425,718 |  |  |  |
| 89 | 1.5.7 | **Suministro e instalación de conduit IMC de 1 " a la vista en Area CL 1, DIV 2, incluye suministro de accesorios y soporets.** |  | 120d | 2015-05-14 | 2015-11-19 |  | 0d |  | 4,257,180 | 4.5 | m | 60 |
| 90 | 1.5.7.1 | Orden de compra |  | 30d | 2015-05-14 | 2015-07-02 | 85SS | 0d |  | 851,436 |  |  |  |
| 91 | 1.5.7.2 | Materiales en obra |  | 30d | 2015-07-02 | 2015-08-19 | 90SS+30d | 57d | 0d | 1,702,872 |  |  |  |
| 92 | 1.5.7.3 | instalacion |  | 30d | 2015-08-19 | 2015-10-01 | 91SS+30d | 57d | 0d | 1,277,154 |  |  |  |
| 93 | 1.5.7.4 | prubas de prueba comissioning y Precomissioning |  | 30d | 2015-10-01 | 2015-11-19 | 92SS+30d | 57d |  | 425,718 |  |  |  |
| 94 | 1.5.8 | Concreto de señalización 1:3:6 o 1500 PSI |  | 78d | 2015-07-02 | 2015-10-29 | 91SS | 69d |  | 502,150 | 4.6 | m | 0.5 |
| 95 | 1.5.9 | **Suministro e instalación de Luminaria horizontal Cerrada HPS 250 W, con balsto multitap (208, 240, 277 V), para alumbrado publico, incluye cableado desde caja pié de poste, conexionado, marquillado, anclaje en poste y puesta en funcionamiento.** |  | 120d | 2015-06-17 | 2015-12-17 |  | 0d |  | 2,036,634 | 4.9 | un | 2 |
| 96 | 1.5.9.1 | Orden de compra |  | 30d | 2015-06-17 | 2015-08-03 | 90SS+20d | 0d |  | 407,327 |  |  |  |
| 97 | 1.5.9.2 | Materiales en obra |  | 30d | 2015-08-03 | 2015-09-17 | 96SS+30d | 37d | 0d | 814,654 |  |  |  |
| 98 | 1.5.9.3 | instalacion |  | 30d | 2015-09-17 | 2015-11-03 | 97SS+30d | 37d | 0d | 610,990 |  |  |  |
| 99 | 1.5.9.4 | prubas de prueba comissioning y Precomissioning |  | 30d | 2015-11-03 | 2015-12-17 | 98SS+30d | 37d |  | 203,663 |  |  |  |
| 100 | 1.5.10 | **Suministro e instalación de Lumnaria HPS de 70 W, tipo Stanchion Mounted, con Balasto Multitap (120, 208, 240, 277 V) equipada con Refractor, Globo de vidrio protector y Reflector en Angulo de 25°. (Ref. VMVSJ150G24P21RA70MT)., pruebas, preco y commisioni** |  | 120d | 2015-06-17 | 2015-12-17 |  | 0d |  | 5,021,368 | 4.1 | un | 4 |
| 101 | 1.5.10.1 | Orden de compra |  | 30d | 2015-06-17 | 2015-08-03 | 96SS | 0d |  | 1,004,274 |  |  |  |
| 102 | 1.5.10.2 | Materiales en obra |  | 30d | 2015-08-03 | 2015-09-17 | 101SS+30d | 37d | 0d | 2,008,547 |  |  |  |
| 103 | 1.5.10.3 | instalacion |  | 30d | 2015-09-17 | 2015-11-03 | 102SS+30d | 37d | 0d | 1,506,410 |  |  |  |
| 104 | 1.5.10.4 | prubas de prueba comissioning y Precomissioning |  | 30d | 2015-11-03 | 2015-12-17 | 103SS+30d | 37d |  | 502,137 |  |  |  |
| 105 | 1.5.11 | Traslado de red de alimentacion, conexionado y puesta en funcionamiento |  | 120d | 2015-06-17 | 2015-12-17 | 101SS | 5d | 0d | 826,450 | 4.7 | m | 50 |
| 106 | 1.5.12 | Relleno en material seleccionado de la excavación compactado |  | 108d | 2015-07-09 | 2015-12-23 | 105SS+15d | 5d | 0d | 838,180 | 4.3 | m3 | 14 |
| 107 | 1.5.13 | TERMINACION TRAMPA DE DESPACHO | milestone | 0d | 2015-12-23 | 2015-12-23 | 106FF | 5d | 0d |  |  |  |  |

| ID | WBS | Task | Type | Duration | Start | Finish | Predecessors | Total slack | Free slack | Cost | item | unidad | cantidad |
| --- | --- | --- | --- | --- | --- | --- | --- | --- | --- | --- | --- | --- | --- |
| 108 | 1.6 | **TAPETE DIELECTRICO DEL CCM** |  | 120d | 2015-07-09 | 2016-01-13 |  | 0d |  | 7,876,274 | 5 |  |  |
| 109 | 1.6.1 | **Suministro e instalacion de tapete dieléctrico, Clase I, de 10 m2 en Cuarto de Control** |  | 120d | 2015-07-09 | 2016-01-13 |  | 0d |  | 7,876,274 | 5.1 | gl | 1 |
| 110 | 1.6.1.1 | Orden de compra |  | 30d | 2015-07-09 | 2015-08-26 | 101SS+15d | 0d |  | 1,575,255 |  |  |  |
| 111 | 1.6.1.2 | Materiales en obra |  | 30d | 2015-08-26 | 2015-10-08 | 110SS+30d | 22d | 0d | 3,150,510 |  |  |  |
| 112 | 1.6.1.3 | instalacion |  | 30d | 2015-10-09 | 2015-11-26 | 111SS+30d | 22d | 0d | 2,362,882 |  |  |  |
| 113 | 1.6.1.4 | prubas de prueba comissioning y Precomissioning |  | 30d | 2015-11-26 | 2016-01-13 | 112SS+30d | 22d | 0d | 787,627 |  |  |  |
| 114 | 1.6.1.5 | Terminacion tapete electrico | milestone | 0d | 2016-01-13 | 2016-01-13 | 113FF | 22d |  |  |  |  |  |
| 115 | 1.7 | **CORTACIRCUITOS DESCARGADERO** |  | 137d | 2015-07-09 | 2016-02-08 |  | 5d |  | 2,436,654 | 6 |  |  |
| 116 | 1.7.1 | Instalación, conexión, pruebas y puesta en servicio un juego trifásico de Cortacircuitos a la llegada de la línea de 34,5 kv al descargadero de ECOPETROL. Incluye el sumistro de todos los materiales menores necesarios para completar la instalación, tales |  | 90d | 2015-07-09 | 2015-11-26 | 110SS | 52d | 0d | 2,436,654 | 6.1 | gl | 1 |
| 117 | 1.7.2 | Terminacion circuito descargadero | milestone | 0d | 2015-11-26 | 2015-11-26 | 116FF | 52d |  |  |  |  |  |
| 118 | 1.7.3 | PRECOMISION Y COMISION Y PUESTA EN MARCHA |  | 15d | 2016-01-15 | 2016-02-08 | 107SS+14d | 5d |  |  |  |  |  |
| 119 | 1.8 | LIQUIDACIÓN CONTRATO DE OBRA Y DESMOVILIZACION |  | 43d | 2015-12-09 | 2016-02-14 | 110FS+69d | 0d |  | 6,613,188 | 7 | gl | 1 |
